# Cronograma para implementacion Banco Diners Pago Inmediato 25Jun2020

Schedule from MS Project, 2021-09-08 to 2021-12-02, A marks actual dates.

## Calendars

- Estándar: Mon-Fri 09:00-13:00, 15:00-19:00; Sat-Sun off. Exceptions (off unless hours are given): 2021-10-08, 2021-11-01 to 2021-11-02.

## Resources

| Resource |
| --- |
| BANRED |
| Liliana Osorio G. |
| QA BANRED |
| Freddy Huayamave |
| BANCO GUAYAQUIL |
| BANRED, BANCO GUAYAQUIL |
| ANT |
| BANCO BOLIVARIANO |
| BANRED; BANCO BOLIVARIANO |

## Schedule

| ID | WBS | Task | Duration | Start | Finish | Predecessors | Complete | Remaining | Total slack | Free slack | Constraint | Resources | Work | Actual work |
| --- | --- | --- | --- | --- | --- | --- | --- | --- | --- | --- | --- | --- | --- | --- |
| 1 | 1 | **INCORPORACION BANCO BOLIVARIANO AL SERVICIO DE RECAUDACIONES ANT** | 59d | 2021-09-08 A | 2021-12-02 |  | 9% | 53.74d | 0d |  |  |  | 880h | 40h |
| 2 | 1.1 | **PLANIFICACIÓN** | 28d | 2021-09-08 A | 2021-10-18 |  | 32% | 19d | 31d |  |  |  | 184h | 40h |
| 3 | 1.1.1 | Envío de propuesta | 1d | 2021-09-08 A | 2021-09-08 A |  | 100% |  |  |  | start no earlier than 2021-09-08 |  |  |  |
| 4 | 1.1.2 | Aprobación de propuesta | 1d | 2021-09-08 A | 2021-09-08 A |  | 100% |  |  |  | start no earlier than 2021-09-08 |  |  |  |
| 5 | 1.1.3 | Reunión inicial | 1d | 2021-09-23 A | 2021-09-23 A |  | 100% |  |  |  | start no earlier than 2021-09-23 |  |  |  |
| 6 | 1.1.4 | Generación y envío de matriz de stakeholders | 1d | 2021-09-24 A | 2021-09-24 A | 5 | 100% |  |  |  |  |  |  |  |
| 7 | 1.1.5 | **Cronograma** | 12d | 2021-09-27 A | 2021-10-13 |  | 25% | 9d | 34d |  |  |  | 96h | 24h |
| 8 | 1.1.5.1 | Generación cronograma de actividades | 2d | 2021-09-27 A | 2021-09-28 A | 6 | 100% |  |  |  |  | Liliana Osorio G. | 16h | 16h |
| 9 | 1.1.5.2 | Envio de Cronograma de Actividades | 1d | 2021-09-29 A | 2021-09-29 A | 8 | 100% |  |  |  |  | Liliana Osorio G. | 8h | 8h |
| 10 | 1.1.5.3 | Aceptación del cronograma de Actividades | 9d | 2021-09-30 | 2021-10-13 | 9 |  |  | 34d |  |  | BANCO BOLIVARIANO | 72h |  |
| 11 | 1.1.6 | **Requerimiento Funcional** | 10d | 2021-09-30 A | 2021-10-14 |  | 20% | 8d | 26d |  |  |  | 80h | 16h |
| 12 | 1.1.6.1 | Generación y envío de Requerimiento Funcional | 2d | 2021-09-30 A | 2021-10-01 A | 9 | 100% |  |  |  | finish no earlier than 2021-04-06 | Liliana Osorio G. | 16h | 16h |
| 13 | 1.1.6.2 | Aprobación del Requerimiento Funcional | 8d | 2021-10-04 | 2021-10-14 | 12 |  |  | 26d | 0d |  | BANCO BOLIVARIANO | 64h |  |
| 14 | 1.1.7 | **Solicitud de Cambios** | 2d | 2021-10-15 | 2021-10-18 |  |  |  | 26d |  |  |  | 8h |  |
| 15 | 1.1.7.1 | Preparar Documentación | 1d | 2021-10-15 | 2021-10-15 | 13 |  |  | 26d | 0d | start no earlier than 2020-07-07 | Liliana Osorio G. | 8h |  |
| 16 | 1.1.7.2 | Aprobación de Control de Cambios | 1d | 2021-10-18 | 2021-10-18 | 15 |  |  | 26d | 0d |  |  |  |  |
| 17 | 1.2 | **EJECUCIÓN** | 24d | 2021-10-01 | 2021-11-08 |  |  |  | 0d |  |  |  | 464h |  |
| 18 | 1.2.1 | **BANCO BOLIVARIANO** | 15d | 2021-10-01 | 2021-10-22 |  |  |  | 0d |  |  |  | 240h |  |
| 19 | 1.2.1.1 | **Desarrollo Banco Bolivariano** | 15d | 2021-10-01 | 2021-10-22 |  |  |  | 0d |  |  | BANCO BOLIVARIANO | 240h |  |
| 20 | 1.2.1.1.1 | Desarrollo de canales Banco Bolivariano | 15d | 2021-10-01 | 2021-10-22 |  |  |  | 0d |  | start no earlier than 2021-10-01 | BANCO BOLIVARIANO | 120h |  |
| 21 | 1.2.2 | **Banred** | 5d | 2021-10-19 | 2021-10-25 |  |  |  | 2d |  |  |  | 80h |  |
| 22 | 1.2.2.1 | DISEÑO | 1d | 2021-10-19 | 2021-10-19 | 16 |  |  | 26d | 0d | start no earlier than 2021-01-04 | BANRED | 8h |  |
| 23 | 1.2.2.2 | Presentación de diseño | 1d | 2021-10-19 | 2021-10-19 | 22SS |  |  | 30d |  |  | BANRED | 8h |  |
| 24 | 1.2.2.3 | Aprobación de diseño | 1d | 2021-10-19 | 2021-10-19 | 22SS |  |  | 26d | 0d |  | BANRED | 8h |  |
| 25 | 1.2.2.4 | Desarrollo BANRED | 3d | 2021-10-20 | 2021-10-22 | 24 |  |  | 26d | 0d |  | BANRED | 24h |  |
| 26 | 1.2.2.5 | Diseño de Certificación de Calidad | 1d | 2021-10-25 | 2021-10-25 | 25 |  |  | 26d |  | start no earlier than 2020-07-23 | BANRED | 8h |  |
| 27 | 1.2.2.6 | Permisos de conectividad | 2d | 2021-10-21 | 2021-10-22 | 20FF |  |  | 0d |  |  | BANRED | 16h |  |
| 28 | 1.2.2.7 | Pruebas de Conectividad | 1d | 2021-10-25 | 2021-10-25 | 27 |  |  | 0d |  |  | BANRED; BANCO BOLIVARIANO | 8h |  |

| ID | WBS | Task | Duration | Start | Finish | Predecessors | Total slack | Constraint | Resources | Work |
| --- | --- | --- | --- | --- | --- | --- | --- | --- | --- | --- |
| 29 | 1.2.3 | **Pruebas Técnicas** | 8d | 2021-10-26 | 2021-11-08 |  | 0d |  |  | 144h |
| 30 | 1.2.3.1 | Pruebas técnicas | 8d | 2021-10-26 | 2021-11-08 | 28 | 0d |  | BANRED; BANCO BOLIVARIANO | 64h |
| 31 | 1.2.3.2 | **Proceso de conciliación** | 8d | 2021-10-26 | 2021-11-08 |  | 0d |  |  | 80h |
| 32 | 1.2.3.2.1 | Proceso batch | 8d | 2021-10-26 | 2021-11-08 | 30FF | 0d |  | BANRED; BANCO BOLIVARIANO | 64h |
| 33 | 1.2.3.2.2 | Aprobación conciliación | 1d | 2021-11-08 | 2021-11-08 | 32FF | 18d |  | BANRED; BANCO BOLIVARIANO | 8h |
| 34 | 1.2.3.2.3 | Preparacion de Documentacion previa a QA | 1d | 2021-11-08 | 2021-11-08 | 32FF | 0d |  | BANRED | 8h |
| 35 | 1.3 | **CERTIFICACIÓN** | 47d | 2021-09-15 | 2021-11-23 |  | 7d |  |  | 184h |
| 36 | 1.3.1 | **Certificación de Calidad** | 45d | 2021-09-15 | 2021-11-19 |  | 9d |  |  | 80h |
| 37 | 1.3.1.1 | Revisión documentación versionamiento | 1d | 2021-11-09 | 2021-11-09 | 34 | 0d | start no earlier than 2020-07-30 | BANRED | 8h |
| 38 | 1.3.1.2 | Versionamiento | 1d | 2021-11-10 | 2021-11-10 | 37 | 0d |  | BANRED; BANCO BOLIVARIANO | 8h |
| 39 | 1.3.1.3 | Ejecución de guión de pruebas | 7d | 2021-11-11 | 2021-11-19 | 38 | 0d |  | BANRED; BANCO BOLIVARIANO | 56h |
| 40 | 1.3.1.4 | Entrega a producción | 1d | 2021-09-15 | 2021-09-15 |  | 53d | start no earlier than 2021-09-15 | BANRED | 8h |
| 41 | 1.3.2 | **Certificación Operaciones** | 9d | 2021-11-11 | 2021-11-23 |  | 0d |  |  | 104h |
| 42 | 1.3.2.1 | Certificacion Operaciones | 7d | 2021-11-11 | 2021-11-19 | 39FF | 0d |  | BANRED; BANCO BOLIVARIANO | 56h |
| 43 | 1.3.2.2 | Certificación conciliación ANT (Creación buzón SFTP) | 2d | 2021-11-22 | 2021-11-23 | 42 | 7d |  | BANRED; ANT | 32h |
| 44 | 1.3.2.3 | Aprobacion Banco BOLIVARIANO | 1d | 2021-11-22 | 2021-11-22 | 42 | 0d |  | BANRED; BANCO BOLIVARIANO | 8h |
| 45 | 1.3.2.4 | Aprobación de ANT | 1d | 2021-11-23 | 2021-11-23 | 44 | 7d |  | ANT | 8h |
| 46 | 1.4 | **IMPLEMENTACIÓN Y CIERRE** | 8d | 2021-11-23 | 2021-12-02 |  | 0d |  |  | 48h |
| 47 | 1.4.1 | Generación documentación pase a producción. | 1d | 2021-11-23 | 2021-11-23 | 44 | 0d |  |  |  |
| 48 | 1.4.2 | Aprobación pase a producción | 2d | 2021-11-24 | 2021-11-25 | 47 | 0d |  |  |  |
| 49 | 1.4.3 | **Versionamiento en producción** | 6d | 2021-11-25 | 2021-12-02 |  | 0d |  |  | 48h |
| 50 | 1.4.3.1 | Liberación a Producción | 1d | 2021-11-25 | 2021-11-25 | 48FF | 0d |  | BANRED; BANCO BOLIVARIANO | 8h |
| 51 | 1.4.3.2 | Seguimiento Post producción | 5d | 2021-11-26 | 2021-12-02 | 50 | 0d |  | BANRED; BANCO BOLIVARIANO | 40h |
