# Cronograma para implementacion Banco Diners Pago Inmediato 25Jun2020

Schedule from MS Project, 2021-09-08 to 2022-03-22, A marks actual dates.

## Calendars

- Estándar: Mon-Fri 09:00-13:00, 15:00-19:00; Sat-Sun off. Exceptions (off unless hours are given): 2021-10-08, 2021-11-01 to 2021-11-03, 2021-12-24, 2021-12-31.

## Resources

| Resource |
| --- |
| BANRED |
| Liliana Osorio G. |
| QA BANRED |
| Freddy Huayamave |
| BANCO GUAYAQUIL |
| BANRED, BANCO GUAYAQUIL |
| ANT |
| BANCO BOLIVARIANO |
| BANRED; BANCO BOLIVARIANO |

## Schedule

| ID | WBS | Task | Duration | Start | Finish | Predecessors | Complete | Remaining | Total slack | Free slack | Constraint | Resources | Work | Actual work |
| --- | --- | --- | --- | --- | --- | --- | --- | --- | --- | --- | --- | --- | --- | --- |
| 1 | 1 | **INCORPORACION BANCO BOLIVARIANO AL SERVICIO DE RECAUDACIONES ANT** | 134d | 2021-09-08 A | 2022-03-22 |  | 16% | 112.8d | 0d |  |  |  | 1680h | 168h |
| 2 | 1.1 | **PLANIFICACIÓN** | 32d | 2021-09-08 A | 2021-10-22 |  | 60% | 12.95d | 102d |  |  |  | 296h | 168h |
| 3 | 1.1.1 | Envío de propuesta | 1d | 2021-09-08 A | 2021-09-08 A |  | 100% |  |  |  | start no earlier than 2021-09-08 |  |  |  |
| 4 | 1.1.2 | Aprobación de propuesta | 1d | 2021-09-08 A | 2021-09-08 A |  | 100% |  |  |  | start no earlier than 2021-09-08 |  |  |  |
| 5 | 1.1.3 | Reunión inicial | 1d | 2021-09-23 A | 2021-09-23 A |  | 100% |  |  |  | start no earlier than 2021-09-23 |  |  |  |
| 6 | 1.1.4 | Generación y envío de matriz de stakeholders | 1d | 2021-09-24 A | 2021-09-24 A | 5 | 100% |  |  |  |  |  |  |  |
| 7 | 1.1.5 | **Cronograma** | 18d | 2021-09-27 A | 2021-10-21 |  | 58% | 7.5d | 103d |  |  |  | 144h | 84h |
| 8 | 1.1.5.1 | Generación cronograma de actividades | 2d | 2021-09-27 A | 2021-09-28 A | 6 | 100% |  |  |  |  | Liliana Osorio G. | 16h | 16h |
| 9 | 1.1.5.2 | Envio de Cronograma de Actividades | 1d | 2021-09-29 A | 2021-09-29 A | 8 | 100% |  |  |  |  | Liliana Osorio G. | 8h | 8h |
| 10 | 1.1.5.3 | Aceptación del cronograma de Actividades | 15d | 2021-09-30 A | 2021-10-21 | 9 | 50% | 7.5d | 103d |  |  | BANCO BOLIVARIANO | 120h | 60h |
| 11 | 1.1.6 | **Requerimiento Funcional** | 18d | 2021-09-24 A | 2021-10-20 |  | 58% | 7.5d | 97d |  |  |  | 144h | 84h |
| 12 | 1.1.6.1 | Generación y envío de Requerimiento Funcional | 3d | 2021-09-24 A | 2021-09-28 A | 6SS | 100% |  |  |  | finish no earlier than 2021-04-06 | Liliana Osorio G. | 24h | 24h |
| 13 | 1.1.6.2 | Aprobación del Requerimiento Funcional | 15d | 2021-09-29 A | 2021-10-20 | 12 | 50% | 7.5d | 97d | 0d |  | BANCO BOLIVARIANO | 120h | 60h |
| 14 | 1.1.7 | **Solicitud de Cambios** | 2d | 2021-10-21 | 2021-10-22 |  |  |  | 97d |  |  |  | 8h |  |
| 15 | 1.1.7.1 | Preparar Documentación | 1d | 2021-10-21 | 2021-10-21 | 13 |  |  | 97d | 0d | start no earlier than 2020-07-07 | Liliana Osorio G. | 8h |  |
| 16 | 1.1.7.2 | Aprobación de Control de Cambios | 1d | 2021-10-22 | 2021-10-22 | 15 |  |  | 97d | 0d |  |  |  |  |
| 17 | 1.2 | **EJECUCIÓN** | 84d | 2021-10-25 | 2022-02-24 |  |  |  | 17d |  |  |  | 1152h |  |
| 18 | 1.2.1 | **BANCO BOLIVARIANO** | 58d | 2021-11-22 | 2022-02-11 |  |  |  | 0d |  |  |  | 928h |  |
| 19 | 1.2.1.1 | **Desarrollo Banco Bolivariano** | 58d | 2021-11-22 | 2022-02-11 |  |  |  | 0d |  |  | BANCO BOLIVARIANO | 928h |  |
| 20 | 1.2.1.1.1 | Diseño e Infraestructura | 5d | 2021-11-22 | 2021-11-26 |  |  |  | 0d |  | finish no earlier than 2021-11-26 | BANCO BOLIVARIANO | 40h |  |
| 21 | 1.2.1.1.2 | Ajuste microservicio OTC | 5d | 2021-11-29 | 2021-12-03 | 20 |  |  | 0d |  | finish no earlier than 2021-12-03 | BANCO BOLIVARIANO | 40h |  |
| 22 | 1.2.1.1.3 | Desarrollo servicio que conecta a Banred | 18d | 2021-12-06 | 2021-12-30 | 21 |  |  | 0d |  | finish no earlier than 2021-12-30 | BANCO BOLIVARIANO | 144h |  |
| 23 | 1.2.1.1.4 | Desarrollo programas backend | 10d | 2022-01-03 | 2022-01-14 | 22 |  |  | 0d |  | finish no earlier than 2022-01-14 | BANCO BOLIVARIANO | 80h |  |
| 24 | 1.2.1.1.5 | Ajustes canal 24online | 5d | 2022-01-17 | 2022-01-21 | 23 |  |  | 0d |  | finish no earlier than 2022-01-21 | BANCO BOLIVARIANO | 40h |  |
| 25 | 1.2.1.1.6 | Pruebas ténicas | 5d | 2022-01-24 | 2022-01-28 | 24 |  |  | 0d |  | finish no earlier than 2022-01-28 | BANCO BOLIVARIANO | 40h |  |
| 26 | 1.2.1.1.7 | Pruebas funcionales y de certificación | 10d | 2022-01-31 | 2022-02-11 | 25 |  |  | 0d |  | finish no earlier than 2022-02-11 | BANCO BOLIVARIANO | 80h |  |

| ID | WBS | Task | Duration | Start | Finish | Predecessors | Total slack | Free slack | Constraint | Resources | Work |
| --- | --- | --- | --- | --- | --- | --- | --- | --- | --- | --- | --- |
| 27 | 1.2.2 | **Banred** | 76d | 2021-10-25 | 2022-02-14 |  | 26d |  |  |  | 80h |
| 28 | 1.2.2.1 | DISEÑO | 1d | 2021-10-25 | 2021-10-25 | 16 | 97d | 0d | start no earlier than 2021-01-04 | BANRED | 8h |
| 29 | 1.2.2.2 | Presentación de diseño | 1d | 2021-10-25 | 2021-10-25 | 28SS | 101d |  |  | BANRED | 8h |
| 30 | 1.2.2.3 | Aprobación de diseño | 1d | 2021-10-25 | 2021-10-25 | 28SS | 97d | 0d |  | BANRED | 8h |
| 31 | 1.2.2.4 | Desarrollo BANRED | 3d | 2021-10-26 | 2021-10-28 | 30 | 97d | 0d |  | BANRED | 24h |
| 32 | 1.2.2.5 | Diseño de Certificación de Calidad | 1d | 2021-10-29 | 2021-10-29 | 31 | 97d |  | start no earlier than 2020-07-23 | BANRED | 8h |
| 33 | 1.2.2.6 | Permisos de conectividad | 2d | 2022-02-10 | 2022-02-11 | 26FF | 0d |  |  | BANRED | 16h |
| 34 | 1.2.2.7 | Pruebas de Conectividad | 1d | 2022-02-14 | 2022-02-14 | 33 | 0d |  |  | BANRED; BANCO BOLIVARIANO | 8h |
| 35 | 1.2.3 | **Pruebas Técnicas** | 8d | 2022-02-15 | 2022-02-24 |  | 0d |  |  |  | 144h |
| 36 | 1.2.3.1 | Pruebas técnicas | 8d | 2022-02-15 | 2022-02-24 | 34 | 0d |  |  | BANRED; BANCO BOLIVARIANO | 64h |
| 37 | 1.2.3.2 | **Proceso de conciliación** | 8d | 2022-02-15 | 2022-02-24 |  | 0d |  |  |  | 80h |
| 38 | 1.2.3.2.1 | Proceso batch | 8d | 2022-02-15 | 2022-02-24 | 36FF | 0d |  |  | BANRED; BANCO BOLIVARIANO | 64h |
| 39 | 1.2.3.2.2 | Aprobación conciliación | 1d | 2022-02-24 | 2022-02-24 | 38FF | 18d |  |  | BANRED; BANCO BOLIVARIANO | 8h |
| 40 | 1.2.3.2.3 | Preparacion de Documentacion previa a QA | 1d | 2022-02-24 | 2022-02-24 | 38FF | 0d |  |  | BANRED | 8h |
| 41 | 1.3 | **CERTIFICACIÓN** | 122d | 2021-09-15 | 2022-03-11 |  | 7d |  |  |  | 184h |
| 42 | 1.3.1 | **Certificación de Calidad** | 120d | 2021-09-15 | 2022-03-09 |  | 9d |  |  |  | 80h |
| 43 | 1.3.1.1 | Revisión documentación versionamiento | 1d | 2022-02-25 | 2022-02-25 | 40 | 0d |  | start no earlier than 2020-07-30 | BANRED | 8h |
| 44 | 1.3.1.2 | Versionamiento | 1d | 2022-02-28 | 2022-02-28 | 43 | 0d |  |  | BANRED; BANCO BOLIVARIANO | 8h |
| 45 | 1.3.1.3 | Ejecución de guión de pruebas | 7d | 2022-03-01 | 2022-03-09 | 44 | 0d |  |  | BANRED; BANCO BOLIVARIANO | 56h |
| 46 | 1.3.1.4 | Entrega a producción | 1d | 2021-09-15 | 2021-09-15 |  | 128d |  | start no earlier than 2021-09-15 | BANRED | 8h |
| 47 | 1.3.2 | **Certificación Operaciones** | 9d | 2022-03-01 | 2022-03-11 |  | 0d |  |  |  | 104h |
| 48 | 1.3.2.1 | Certificacion Operaciones | 7d | 2022-03-01 | 2022-03-09 | 45FF | 0d |  |  | BANRED; BANCO BOLIVARIANO | 56h |
| 49 | 1.3.2.2 | Certificación conciliación ANT (Creación buzón SFTP) | 2d | 2022-03-10 | 2022-03-11 | 48 | 7d |  |  | BANRED; ANT | 32h |
| 50 | 1.3.2.3 | Aprobacion Banco BOLIVARIANO | 1d | 2022-03-10 | 2022-03-10 | 48 | 0d |  |  | BANRED; BANCO BOLIVARIANO | 8h |
| 51 | 1.3.2.4 | Aprobación de ANT | 1d | 2022-03-11 | 2022-03-11 | 50 | 7d |  |  | ANT | 8h |

| ID | WBS | Task | Duration | Start | Finish | Predecessors | Total slack | Resources | Work |
| --- | --- | --- | --- | --- | --- | --- | --- | --- | --- |
| 52 | 1.4 | **IMPLEMENTACIÓN Y CIERRE** | 8d | 2022-03-11 | 2022-03-22 |  | 0d |  | 48h |
| 53 | 1.4.1 | Generación documentación pase a producción. | 1d | 2022-03-11 | 2022-03-11 | 50 | 0d |  |  |
| 54 | 1.4.2 | Aprobación pase a producción | 2d | 2022-03-14 | 2022-03-15 | 53 | 0d |  |  |
| 55 | 1.4.3 | **Versionamiento en producción** | 6d | 2022-03-15 | 2022-03-22 |  | 0d |  | 48h |
| 56 | 1.4.3.1 | Liberación a Producción | 1d | 2022-03-15 | 2022-03-15 | 54FF | 0d | BANRED; BANCO BOLIVARIANO | 8h |
| 57 | 1.4.3.2 | Seguimiento Post producción | 5d | 2022-03-16 | 2022-03-22 | 56 | 0d | BANRED; BANCO BOLIVARIANO | 40h |
