# OTC

Schedule from MS Project, 2018-04-09 to 2018-06-04, A marks actual dates.

## Calendars

- Estándar: Mon-Fri 09:00-13:00, 15:00-19:00; Sat-Sun off.

## Resources

| Resource |
| --- |
| AG |
| CM |
| BB |
| RB |
| FA |
| DB |

## Schedule

| ID | WBS | Task | Type | Duration | Start | Finish | Predecessors | Complete | Remaining | Total slack | Free slack | Resources | Work | Actual work |
| --- | --- | --- | --- | --- | --- | --- | --- | --- | --- | --- | --- | --- | --- | --- |
| 1 | 1 | **Omnichannel Transaction Collector** |  | 40.31d | 2018-04-09 A | 2018-06-04 |  | 3% | 38.92d | 0d |  |  | 449.5h | 13.5h |
| 2 | 1.1 | Inicio de Proyecto | milestone | 0d | 2018-04-09 A | 2018-04-09 A |  | 100% |  |  |  | AG |  |  |
| 3 | 1.2 | **Analisis** |  | 5.06d | 2018-04-09 A | 2018-04-16 |  | 27% | 3.68d | 31d | 0d |  | 21.5h | 5.5h |
| 4 | 1.2.1 | Levantamiento de Casos de Uso |  | 2.5h | 2018-04-09 A | 2018-04-09 A | 2 | 100% |  |  |  | AG | 2h | 2h |
| 5 | 1.2.2 | Definición Historia de Usuarios |  | 0.25d | 2018-04-10 A | 2018-04-10 A | 4 | 100% |  |  |  | AG | 2h | 2h |
| 6 | 1.2.3 | Priorizacion de Historia de Usuario |  | 0.06d | 2018-04-12 A | 2018-04-12 A | 5 | 100% |  |  |  | AG | 0.5h | 0.5h |
| 7 | 1.2.4 | Documento Funcional |  | 2d | 2018-04-12 | 2018-04-16 | 6 |  |  | 31d | 0d | AG | 16h |  |
| 8 | 1.2.5 | Aprobación de Documento Funcional | milestone | 0d | 2018-04-16 | 2018-04-16 | 7 |  |  | 31d |  | BB |  |  |
| 9 | 1.2.6 | Replanificación en Iteraciones |  | 0.12d | 2018-04-10 A | 2018-04-10 A | 8 | 100% |  |  |  | AG | 1h | 1h |
| 10 | 1.3 | **Diseno** |  | 4.25d | 2018-04-16 | 2018-04-20 |  |  |  | 31d |  |  | 36h |  |
| 11 | 1.3.1 | Levantamiento de información Tecnica |  | 0.12d | 2018-04-16 | 2018-04-16 | 3 |  |  | 31d | 0d | AG; CM | 2h |  |
| 12 | 1.3.2 | Revisión de propuesta de Diseno |  | 0.12d | 2018-04-16 | 2018-04-16 | 11 |  |  | 31d | 0d | AG; CM | 2h |  |
| 13 | 1.3.3 | Documento Tecnico |  | 2d | 2018-04-16 | 2018-04-18 | 12 |  |  | 31d | 0d | AG | 16h |  |
| 14 | 1.3.4 | Plan de Pruebas |  | 2d | 2018-04-18 | 2018-04-20 | 13 |  |  | 31d | 0d | AG | 16h |  |
| 15 | 1.3.5 | Aprobación de Documento Tecnico | milestone | 0d | 2018-04-20 | 2018-04-20 | 14 |  |  | 31d |  | BB |  |  |
| 16 | 1.4 | **Implementación** |  | 23d | 2018-04-20 A | 2018-05-23 |  | 3% | 22.35d | 0d |  |  | 280h | 8h |
| 17 | 1.4.1 | **Iteración 1** |  | 10d | 2018-04-20 A | 2018-05-04 |  | 10% | 9d | 0d |  |  | 80h | 8h |
| 18 | 1.4.1.1 | **Microservices** |  | 10d | 2018-04-20 A | 2018-05-04 |  | 10% | 9d | 0d |  |  | 80h | 8h |
| 19 | 1.4.1.1.1 | **OTC API** |  | 10d | 2018-04-20 A | 2018-05-04 |  | 10% | 9d | 0d |  |  | 80h | 8h |
| 20 | 1.4.1.1.1.1 | Contrato de Servicio SOAP |  | 1d | 2018-04-20 A | 2018-04-23 A | 10 | 100% |  |  |  | DB | 8h | 8h |
| 21 | 1.4.1.1.1.2 | Microservices Gateway SOAP |  | 2d | 2018-04-23 | 2018-04-25 | 20 |  |  | 0d |  | DB | 16h |  |
| 22 | 1.4.1.1.1.3 | Microservice Core (Modelo OTC) |  | 3d | 2018-04-25 | 2018-04-30 | 21 |  |  | 0d |  | DB | 24h |  |
| 23 | 1.4.1.1.1.4 | Mock Operaciones Recaudo |  | 2d | 2018-04-30 | 2018-05-02 | 22 |  |  | 0d |  | DB | 16h |  |
| 24 | 1.4.1.1.1.5 | Despliegue Pruebas |  | 2d | 2018-05-02 | 2018-05-04 | 23 |  |  | 0d |  | DB | 16h |  |

| ID | WBS | Task | Type | Duration | Start | Finish | Predecessors | Total slack | Free slack | Resources | Work |
| --- | --- | --- | --- | --- | --- | --- | --- | --- | --- | --- | --- |
| 25 | 1.4.2 | **Iteración 2** |  | 13d | 2018-05-04 | 2018-05-23 |  | 0d |  |  | 200h |
| 26 | 1.4.2.1 | **Infraestructura** |  | 3.5d | 2018-05-04 | 2018-05-09 |  | 9.5d |  |  | 24h |
| 27 | 1.4.2.1.1 | Seguridad |  | 1.5d | 2018-05-04 | 2018-05-07 | 17 | 9.5d | 0d | AG | 8h |
| 28 | 1.4.2.1.2 | Mensajeria |  | 2d | 2018-05-07 | 2018-05-09 | 27 | 9.5d |  | AG | 16h |
| 29 | 1.4.2.2 | **Frontend** |  | 9d | 2018-05-04 | 2018-05-17 |  | 4d |  |  | 72h |
| 30 | 1.4.2.2.1 | Administrador de Recaudadores |  | 2d | 2018-05-04 | 2018-05-08 | 17 | 4d | 0d | FA | 16h |
| 31 | 1.4.2.2.2 | Administrador de Operaciones |  | 2d | 2018-05-08 | 2018-05-10 | 30 | 4d | 0d | FA | 16h |
| 32 | 1.4.2.2.3 | Administrador de Acceso |  | 2d | 2018-05-10 | 2018-05-14 | 31 | 4d | 0d | FA | 16h |
| 33 | 1.4.2.2.4 | Administrador de Herramienta |  | 3d | 2018-05-14 | 2018-05-17 | 32 | 4d |  | FA | 24h |
| 34 | 1.4.2.3 | **Microservices** |  | 12d | 2018-05-04 | 2018-05-22 |  | 0d |  |  | 96h |
| 35 | 1.4.2.3.1 | Admin API |  | 3d | 2018-05-04 | 2018-05-09 | 17 | 0d |  | DB | 24h |
| 36 | 1.4.2.3.2 | OTC Core API |  | 6d | 2018-05-09 | 2018-05-17 | 35 | 0d |  | DB | 48h |
| 37 | 1.4.2.3.3 | OTC Util API |  | 3d | 2018-05-17 | 2018-05-22 | 36 | 0d |  | DB | 24h |
| 38 | 1.4.2.4 | Pipeline Kafka OSB |  | 1d | 2018-05-22 | 2018-05-23 | 37 | 0d |  | DB | 8h |
| 39 | 1.5 | **Pruebas** |  | 4d | 2018-05-23 | 2018-05-29 |  | 0d |  |  | 64h |
| 40 | 1.5.1 | Pruebas de Carga |  | 1.5d | 2018-05-23 | 2018-05-24 | 25 | 0d |  | RB; AG | 24h |
| 41 | 1.5.2 | Pruebas Funcionales |  | 2.5d | 2018-05-24 | 2018-05-29 | 40 | 0d |  | RB; AG | 40h |
| 42 | 1.6 | **Estabilizacion** |  | 1d | 2018-05-29 | 2018-05-30 |  | 0d |  |  | 16h |
| 43 | 1.6.1 | Correcciones y Afinamiento |  | 1d | 2018-05-29 | 2018-05-30 | 39 | 0d |  | AG; RB | 16h |
| 44 | 1.7 | **Puesta en Producción** |  | 3d | 2018-05-30 | 2018-06-04 |  | 0d |  |  | 32h |
| 45 | 1.7.1 | Instalacion de Infraestructura Base |  | 1d | 2018-05-30 | 2018-05-31 | 42 | 0d |  | AG | 16h |
| 46 | 1.7.2 | Instalacion de Producto |  | 1d | 2018-05-31 | 2018-06-01 | 45 | 0d |  | AG | 8h |
| 47 | 1.7.3 | Configuración |  | 1d | 2018-06-01 | 2018-06-04 | 46 | 0d |  | AG | 8h |
| 48 | 1.8 | Fin de Proyecto | milestone | 0d | 2018-06-04 | 2018-06-04 | 44 | 0d |  | AG |  |
